# Jack Toresal and The Secret Letter

Schedule from MS Project, 2008-02-01 to 2008-06-30.

## Calendars

- Standard: Mon-Fri 08:00-12:00, 13:00-17:00; Sat-Sun off.

## Resources

| Resource |
| --- |
| David Cornelson |
| Erika Swanson |
| Graeme Jefferis |
| Mike Gentry |
| Peter Mattsson |
| Jacqueline A. Lott |
| e |

## Schedule

| ID | WBS | Task | Duration | Start | Finish | Predecessors | Total slack | Free slack | Constraint | Resources | Work |
| --- | --- | --- | --- | --- | --- | --- | --- | --- | --- | --- | --- |
| 1 | 1 | **Management** | 43d? | 2008-03-03 | 2008-04-30 |  | 43d |  |  |  | 624h |
| 2 | 1.1 | Business Plan | 25d? | 2008-03-03 | 2008-04-04 |  | 61d |  | finish no earlier than 2008-04-04 | David Cornelson | 200h |
| 3 | 1.2 | Marketing Plan | 10d? | 2008-03-24 | 2008-04-04 |  | 61d |  | finish no earlier than 2008-04-04 | David Cornelson | 80h |
| 4 | 1.3 | Funding | 43d? | 2008-03-03 | 2008-04-30 |  | 43d |  | finish no earlier than 2008-04-30 | David Cornelson | 344h |
| 5 | 2 | **Prose** | 21d? | 2008-03-14 | 2008-04-11 |  | 56d |  |  |  | 40h |
| 6 | 2.1 | DD 15 Conversations | 1d? | 2008-03-14 | 2008-03-14 |  | 72d | 4d | start no earlier than 2008-03-14 | Mike Gentry | 8h |
| 7 | 2.2 | DD 16 Updates | 1d? | 2008-03-21 | 2008-03-21 | 6 | 68d | 4d | finish no earlier than 2008-03-21 | Mike Gentry | 8h |
| 8 | 2.3 | DD 16 Conversations | 1d? | 2008-03-28 | 2008-03-28 | 7 | 64d | 4d | finish no earlier than 2008-03-28 | Mike Gentry | 8h |
| 9 | 2.4 | DD 17 Updates | 1d? | 2008-04-04 | 2008-04-04 | 8 | 60d | 4d | finish no earlier than 2008-04-04 | Mike Gentry | 8h |
| 10 | 2.5 | DD 18 Updates | 1d? | 2008-04-11 | 2008-04-11 | 9 | 56d |  | finish no earlier than 2008-04-11 | Mike Gentry | 8h |
| 11 | 3 | **User Interface** | 64d? | 2008-02-01 | 2008-04-30 |  | 43d |  |  |  | 1544h |
| 12 | 3.1 | Save/Load Window | 21d? | 2008-02-01 | 2008-02-29 |  | 86d |  | finish no earlier than 2008-02-29 | Peter Mattsson | 168h |
| 13 | 3.2 | Progress Card Holder | 12d? | 2008-03-14 | 2008-03-31 |  | 65d |  | finish no earlier than 2008-03-31 | Peter Mattsson | 96h |
| 14 | 3.3 | Map | 12d? | 2008-03-14 | 2008-03-31 |  | 65d |  | finish no earlier than 2008-03-31 | Peter Mattsson | 96h |
| 15 | 3.4 | Help | 34d? | 2008-03-14 | 2008-04-30 |  | 43d |  | finish no earlier than 2008-04-30 | Peter Mattsson | 272h |
| 16 | 3.5 | Hints | 34d? | 2008-03-14 | 2008-04-30 |  | 43d |  | finish no earlier than 2008-04-30 | Peter Mattsson | 272h |
| 17 | 3.6 | Comic Book | 12d? | 2008-03-14 | 2008-03-31 |  | 65d |  | finish no earlier than 2008-03-31 | Peter Mattsson | 96h |
| 18 | 3.7 | Notes | 34d? | 2008-03-14 | 2008-04-30 |  | 43d |  | finish no earlier than 2008-04-30 | Peter Mattsson | 272h |
| 19 | 3.8 | Splash Window | 34d? | 2008-03-14 | 2008-04-30 |  | 43d |  | finish no earlier than 2008-04-30 | Peter Mattsson | 272h |
| 20 | 4 | **Art** | 86d? | 2008-02-29 | 2008-06-27 |  | 1d |  |  |  | 552h |
| 21 | 4.1 | **Progress Cards** | 80d? | 2008-03-03 | 2008-06-20 |  | 6d |  |  |  | 264h |
| 22 | 4.1.1 | Grubber's Market | 21d? | 2008-03-03 | 2008-03-31 |  | 53d | 3d | finish no earlier than 2008-03-31 | Erika Swanson | 168h |
| 23 | 4.1.2 | Baker-Butcher-Armorer | 1d? | 2008-04-04 | 2008-04-04 | 22 | 50d | 4d | finish no earlier than 2008-04-04 | Erika Swanson | 8h |
| 24 | 4.1.3 | Jeweler-Moneylender-Clothier | 1d? | 2008-04-11 | 2008-04-11 | 23 | 46d | 4d | finish no earlier than 2008-04-11 | Erika Swanson | 8h |
| 25 | 4.1.4 | Back Alley | 1d? | 2008-04-18 | 2008-04-18 | 24 | 42d | 4d | finish no earlier than 2008-04-18 | Erika Swanson | 8h |
| 26 | 4.1.5 | Woods and Fountain | 1d? | 2008-04-25 | 2008-04-25 | 25 | 38d | 4d | finish no earlier than 2008-04-25 | Erika Swanson | 8h |
| 27 | 4.1.6 | Sewer | 1d? | 2008-05-02 | 2008-05-02 | 26 | 34d | 4d | finish no earlier than 2008-05-02 | Erika Swanson | 8h |
| 28 | 4.1.7 | Maiden House | 1d? | 2008-05-09 | 2008-05-09 | 27 | 30d | 4d | finish no earlier than 2008-05-09 | Erika Swanson | 8h |
| 29 | 4.1.8 | Black Gate Estate | 1d? | 2008-05-16 | 2008-05-16 | 28 | 26d | 4d | finish no earlier than 2008-05-16 | Erika Swanson | 8h |
| 30 | 4.1.9 | Red Gate Estate | 1d? | 2008-05-23 | 2008-05-23 | 29 | 22d | 4d | finish no earlier than 2008-05-23 | Erika Swanson | 8h |
| 31 | 4.1.10 | Grubbers Market (empty) | 1d? | 2008-05-30 | 2008-05-30 | 30 | 18d | 4d | finish no earlier than 2008-05-30 | Erika Swanson | 8h |
| 32 | 4.1.11 | Ballroom | 1d? | 2008-06-06 | 2008-06-06 | 31 | 14d | 4d | finish no earlier than 2008-06-06 | Erika Swanson | 8h |
| 33 | 4.1.12 | Fireplace | 1d? | 2008-06-13 | 2008-06-13 | 32 | 10d | 4d | finish no earlier than 2008-06-13 | Erika Swanson | 8h |
| 34 | 4.1.13 | Dark Tunnel | 1d? | 2008-06-20 | 2008-06-20 | 33 | 6d |  | finish no earlier than 2008-06-20 | Erika Swanson | 8h |

| ID | WBS | Task | Duration | Start | Finish | Predecessors | Total slack | Free slack | Constraint | Resources | Work |
| --- | --- | --- | --- | --- | --- | --- | --- | --- | --- | --- | --- |
| 35 | 4.2 | **Backgrounds** | 85d? | 2008-03-03 | 2008-06-27 |  | 1d |  |  |  | 272h |
| 36 | 4.2.1 | Grubber's Market, daytime | 21d? | 2008-03-03 | 2008-03-31 |  | 52d | 3d | finish no earlier than 2008-03-31 | Erika Swanson | 168h |
| 37 | 4.2.2 | Commerce Street | 1d? | 2008-04-04 | 2008-04-04 | 36 | 49d | 4d | finish no earlier than 2008-04-04 | Erika Swanson | 8h |
| 38 | 4.2.3 | East Commerce Street | 1d? | 2008-04-11 | 2008-04-11 | 37 | 45d | 4d | finish no earlier than 2008-04-11 | Erika Swanson | 8h |
| 39 | 4.2.4 | Bobby | 1d? | 2008-04-18 | 2008-04-18 | 38 | 41d | 4d | finish no earlier than 2008-04-18 | Erika Swanson | 8h |
| 40 | 4.2.5 | Maiden House | 1d? | 2008-04-25 | 2008-04-25 | 39 | 37d | 4d | finish no earlier than 2008-04-25 | Erika Swanson | 8h |
| 41 | 4.2.6 | Captured | 1d? | 2008-05-02 | 2008-05-02 | 40 | 33d | 4d | finish no earlier than 2008-05-02 | Erika Swanson | 8h |
| 42 | 4.2.7 | Underground | 1d? | 2008-05-09 | 2008-05-09 | 41 | 29d | 4d | finish no earlier than 2008-05-09 | Erika Swanson | 8h |
| 43 | 4.2.8 | Black Gate Estate | 1d? | 2008-05-16 | 2008-05-16 | 42 | 25d | 4d | finish no earlier than 2008-05-16 | Erika Swanson | 8h |
| 44 | 4.2.9 | Maiden House II | 1d? | 2008-05-23 | 2008-05-23 | 43 | 21d | 4d | finish no earlier than 2008-05-23 | Erika Swanson | 8h |
| 45 | 4.2.10 | Red Gate Estate | 1d? | 2008-05-30 | 2008-05-30 | 44 | 17d | 4d | finish no earlier than 2008-05-30 | Erika Swanson | 8h |
| 46 | 4.2.11 | Pieter | 1d? | 2008-06-06 | 2008-06-06 | 45 | 13d | 4d | finish no earlier than 2008-06-06 | Erika Swanson | 8h |
| 47 | 4.2.12 | Mercenaries | 1d? | 2008-06-13 | 2008-06-13 | 46 | 9d | 4d | finish no earlier than 2008-06-13 | Erika Swanson | 8h |
| 48 | 4.2.13 | The Baron | 1d? | 2008-06-20 | 2008-06-20 | 47 | 5d | 4d | finish no earlier than 2008-06-20 | Erika Swanson | 8h |
| 49 | 4.2.14 | The War Room | 1d? | 2008-06-27 | 2008-06-27 | 48 | 1d |  | finish no earlier than 2008-06-27 | Erika Swanson | 8h |
| 50 | 4.3 | **Packaging** | 1d? | 2008-02-29 | 2008-02-29 |  | 86d |  |  |  | 16h |
| 51 | 4.3.1 | DVD Cover | 1d? | 2008-02-29 | 2008-02-29 |  | 86d |  | finish no earlier than 2008-02-29 | Erika Swanson | 8h |
| 52 | 4.3.2 | CD Cover | 1d? | 2008-02-29 | 2008-02-29 |  | 86d |  | finish no earlier than 2008-02-29 | Erika Swanson | 8h |
| 53 | 5 | **Testing** | 86d? | 2008-03-03 | 2008-06-30 |  | 0d |  |  |  | 192h |
| 54 | 5.1 | **Game Testing** | 86d? | 2008-03-03 | 2008-06-30 |  | 0d |  |  |  | 192h |
| 55 | 5.1.1 | Round 1 | 21d? | 2008-03-03 | 2008-03-31 |  | 62d | 21d | finish no earlier than 2008-03-31 | Jacqueline A. Lott | 168h |
| 56 | 5.1.2 | Round 2 | 1d? | 2008-04-30 | 2008-04-30 | 55 | 41d | 21d | finish no earlier than 2008-04-30 | Jacqueline A. Lott | 8h |
| 57 | 5.1.3 | Beta | 1d? | 2008-05-30 | 2008-05-30 | 56 | 20d |  | finish no earlier than 2008-05-30 | Jacqueline A. Lott | 8h |
| 58 | 5.1.4 | Final | 1d? | 2008-06-30 | 2008-06-30 | 57 | 0d |  | finish no earlier than 2008-06-30 | Jacqueline A. Lott | 8h |

| ID | WBS | Task | Duration | Start | Finish | Predecessors | Total slack | Free slack | Constraint | Resources | Work |
| --- | --- | --- | --- | --- | --- | --- | --- | --- | --- | --- | --- |
| 59 | 5.2 | **UI Testing** | 86d? | 2008-03-03 | 2008-06-30 |  | 0d |  |  |  |  |
| 60 | 5.2.1 | Round 1 | 21d? | 2008-03-03 | 2008-03-31 |  | 41d | 0d | finish no earlier than 2008-03-31 |  |  |
| 61 | 5.2.2 | Round 2 | 22d? | 2008-04-01 | 2008-04-30 | 60 | 41d | 21d | finish no earlier than 2008-04-30 |  |  |
| 62 | 5.2.3 | Beta | 1d? | 2008-05-30 | 2008-05-30 | 61 | 20d |  | finish no earlier than 2008-05-30 |  |  |
| 63 | 5.2.4 | Final | 1d? | 2008-06-30 | 2008-06-30 | 62 | 0d |  | finish no earlier than 2008-06-30 |  |  |
| 64 | 6 | **Inform 7 Programming** | 31d? | 2008-03-14 | 2008-04-25 |  | 46d |  |  |  | 88h |
| 65 | 6.1 | DD 14 Updates | 6d? | 2008-03-14 | 2008-03-21 |  | 66d | 4d | finish no earlier than 2008-03-21 | Graeme Jefferis | 48h |
| 66 | 6.2 | DD 14 Conversations | 1d? | 2008-03-28 | 2008-03-28 | 65 | 62d | 4d | finish no earlier than 2008-03-28 | Graeme Jefferis | 8h |
| 67 | 6.3 | DD 15 Updates | 1d? | 2008-04-04 | 2008-04-04 | 66 | 58d | 4d | finish no earlier than 2008-04-04 | Graeme Jefferis | 8h |
| 68 | 6.4 | DD 15 Conversations | 1d? | 2008-04-11 | 2008-04-11 | 67 | 54d | 4d | finish no earlier than 2008-04-11 | Graeme Jefferis | 8h |
| 69 | 6.5 | DD 16 Updates | 1d? | 2008-04-18 | 2008-04-18 | 68 | 50d | 4d | finish no earlier than 2008-04-18 | Graeme Jefferis | 8h |
| 70 | 6.6 | DD 16 Conversations | 1d? | 2008-04-25 | 2008-04-25 | 69 | 46d |  | finish no earlier than 2008-04-25 | Graeme Jefferis | 8h |
